# DC module

Schedule from a web Gantt chart, 2026-08-19 to 2026-11-13.
Every day is a working day

## Schedule

| ID | WBS | Task | Type | Duration | Start | Finish | Status |
| --- | --- | --- | --- | --- | --- | --- | --- |
| 2 | 1 | **0. SDV rework** | fixed start, fixed end | 20d | 2026-08-19 | 2026-09-07 |  |
| 3 | 1.1 | Plan A: 增加锡重新回流 |  | 1d | 2026-08-19 | 2026-08-19 | failed |
| 4 | 1.2 | Plan B：小锡炉返修 |  | 1d | 2026-08-19 | 2026-08-19 | failed |
| 5 | 1.3 | **Plan C: 波峰焊返修** |  | 15d | 2026-08-24 | 2026-09-07 |  |
| 6 | 1.3.1 | 波峰焊治具评估验证 |  | 14d | 2026-08-24 | 2026-09-06 |  |
| 7 | 1.3.2 | 出货 |  | 2d | 2026-09-06 | 2026-09-07 |  |
| 8 | 2 | **1. SDV-SIT DC module soldering study** | fixed start, fixed end | 82d | 2026-08-24 | 2026-11-13 |  |
| 9 | 2.1 | **Plan A: 波峰焊验证** | fixed start, fixed end | 50d | 2026-09-03 | 2026-10-22 |  |
| 10 | 2.1.1 | A.1 锡条、无卤助焊剂调拨 |  | 50d | 2026-09-03 | 2026-10-22 |  |
| 11 | 2.1.2 | A.1 波峰焊治具 |  | 15d | 2026-09-15 | 2026-09-29 |  |
| 12 | 2.1.3 | A.2 PCB元器件避让 |  | 30d | 2026-09-06 | 2026-10-05 |  |
| 13 | 2.2 | **Plan B: 回流焊验证** |  | 30d | 2026-08-24 | 2026-09-22 |  |
| 14 | 2.2.1 | B.1 PCB/电解电容/DCmodule物资调拨 |  | 1d | 2026-09-03 | 2026-09-03 |  |
| 15 | 2.2.2 | B.1 扩大钢网开孔 |  | 15d | 2026-08-24 | 2026-09-07 |  |
| 16 | 2.2.3 | B.1 治具增加合成石挡块（3mm&5mm) |  | 30d | 2026-08-24 | 2026-09-22 |  |
| 17 | 2.2.4 | B.1 线体调配 |  | 3d | 2026-08-24 | 2026-08-26 |  |
| 18 | 2.2.5 | B.2 建议扩大PIP孔径 |  | 30d | 2026-08-24 | 2026-09-22 |  |
| 19 | 2.2.6 | B.2 建议缩短Pin长度 |  | 30d | 2026-08-24 | 2026-09-22 |  |
| 20 | 2.2.7 | B.2 建议Pin镀金 |  | 30d | 2026-08-24 | 2026-09-22 |  |
| 21 | 2.2.8 | B.2 建议减少大铜面 |  | 30d | 2026-08-24 | 2026-09-22 |  |
| 22 | 2.3 | SIT |  | 1d | 2026-11-13 | 2026-11-13 |  |

Notes:
- 3: 无效果，锡在PTH孔外融化
- 4: 小锡炉放置区域无380V供电
